Schedule from MS Project, 2025-01-01 to 2025-12-09, costs in $.

## Calendars

- Standard: Mon-Fri 08:00-12:00, 13:00-17:00; Sat-Sun off.

## Resources

| Resource | Rate |
| --- | --- |
| Me | 80 |
| IT Director (Liz) | 130 |
| Senior Project Manager | 70 |
| Project Manager | 60 |
| Project Coordinator | 40 |
| Executive - CEO Team (Murat) | 200 |
| Development Team | 75 |
| Tester | 40 |
| Trainer | 40 |
| Business Unit Managers | 60 |
| HR | 40 |
| Helen | 160 |

## Schedule

| ID | WBS | Task | Type | Duration | Start | Finish | Predecessors | Total slack | Free slack | Constraint | Resources | Work | Cost |
| --- | --- | --- | --- | --- | --- | --- | --- | --- | --- | --- | --- | --- | --- |
| 1 | 1 | **Planning** |  | 17d | 2025-01-01 | 2025-01-23 |  |  |  |  |  | 552h | 42,440 |
| 2 | 1.1 | Project Kickoff Meeting |  | 2d | 2025-01-01 | 2025-01-02 |  | 1d | 0d |  | IT Director (Liz); Me; Project Coordinator | 48h | 4,000 |
| 3 | 1.2 | Discussion with the Business Units |  | 2d | 2025-01-03 | 2025-01-06 | 2 | 1d | 0d |  | Me; Project Coordinator; Senior Project Manager; Business Unit Managers | 64h | 4,000 |
| 4 | 1.3 | Stakeholder Engagement and TPZ |  | 2d | 2025-01-07 | 2025-01-08 | 2, 3 | 1d | 0d |  | Executive - CEO Team (Murat); IT Director (Liz); Business Unit Managers; Senior Project Manager; Me | 80h | 8,640 |
| 5 | 1.4 | Discuss Project Pre-Mortem |  | 1d | 2025-01-07 | 2025-01-07 | 2, 3 | 2d | 1d |  | Development Team; Helen; Me; Project Manager; Senior Project Manager | 40h | 3,560 |
| 6 | 1.5 | Project Charter Creation |  | 6d | 2025-01-09 | 2025-01-16 | 4, 5 | 1d | 0d |  | Me; Project Coordinator; Project Manager; Senior Project Manager | 192h | 12,000 |
| 7 | 1.6 | Finishing Project Charter | milestone | 0d | 2025-01-16 | 2025-01-16 | 6 | 5d |  |  |  |  |  |
| 8 | 1.7 | Meeting to dicuss budget alignment and resource planning |  | 4d | 2025-01-17 | 2025-01-22 | 6 | 1d |  |  | IT Director (Liz); Me; Project Coordinator; Senior Project Manager | 128h | 10,240 |
| 9 | 2 | **Implementation/Execution** |  | 210d | 2025-01-24 | 2025-11-13 | 1 | 0d |  |  |  | 4752h | 296,040 |
| 10 | 2.1 | AI 2025 Development Kickoff meeting |  | 2d | 2025-01-24 | 2025-01-27 | 8 | 0d |  |  | Development Team; Project Coordinator; Senior Project Manager; Project Manager | 64h | 3,920 |
| 11 | 2.2 | Prototype Creation |  | 15d | 2025-01-28 | 2025-02-17 | 10 | 70d | 65d |  | Development Team; Project Coordinator; Project Manager; Senior Project Manager | 480h | 29,400 |
| 12 | 2.3 | Development |  | 80d | 2025-01-28 | 2025-05-19 | 10 | 0d |  |  | Development Team | 640h | 48,000 |
| 13 | 2.4 | Dashboard Integration |  | 20d | 2025-05-20 | 2025-06-16 | 12, 11 | 5d |  |  | Development Team; Project Coordinator; Project Manager | 480h | 28,000 |
| 14 | 2.5 | Testing initiatives |  | 25d | 2025-05-20 | 2025-06-23 | 12 | 0d |  |  | Project Coordinator; Tester | 400h | 16,000 |
| 15 | 2.6 | Training |  | 90d | 2025-06-24 | 2025-10-27 | 13, 14 | 0d |  |  | Trainer; Business Unit Managers | 1440h | 72,000 |
| 16 | 2.7 | Training - Completion | milestone | 0d | 2025-10-27 | 2025-10-27 | 15 | 13d |  |  |  |  |  |
| 17 | 2.8 | Stakeholder Feedback |  | 5d | 2025-06-24 | 2025-06-30 | 14 | 76d | 0d |  | IT Director (Liz); Me; Project Manager; Senior Project Manager; Executive - CEO Team (Murat) | 200h | 21,600 |
| 18 | 2.9 | Iterative Improvements based on testing |  | 15d | 2025-07-01 | 2025-07-21 | 17 | 76d | 70d |  | Development Team; Project Coordinator; Project Manager | 360h | 21,000 |
| 19 | 2.10 | Acquisition - Media and Marketing |  | 1d | 2025-04-01 | 2025-04-01 |  | 162d | 0d | start no earlier than 2025-04-01 | Executive - CEO Team (Murat); HR | 16h | 1,920 |
| 20 | 2.11 | Competitor Acquisition | milestone | 0d | 2025-04-01 | 2025-04-01 | 19 | 162d |  |  |  |  |  |
| 21 | 2.12 | Involuntary Layoffs |  | 1d | 2025-10-28 | 2025-10-28 | 15, 18 | 6d |  |  | HR | 8h | 320 |
| 22 | 2.13 | Stakeholder Agreement for deployment |  | 7d | 2025-10-28 | 2025-11-05 | 15 | 0d |  |  | Business Unit Managers; IT Director (Liz); Me; Project Coordinator; Development Team; Executive - CEO Team (Murat); Project Manager; Senior Project Manager | 448h | 40,040 |
| 23 | 2.14 | Live testing of AI Tool |  | 5d | 2025-11-06 | 2025-11-12 | 18, 21, 22 | 0d |  |  | Development Team; Project Coordinator; Tester; Project Manager | 160h | 8,600 |
| 24 | 2.15 | Deployment |  | 1d | 2025-11-13 | 2025-11-13 | 23 | 0d |  |  | Executive - CEO Team (Murat); IT Director (Liz); Me; Project Coordinator; Project Manager; Senior Project Manager; Development Team | 56h | 5,240 |
| 25 | 2.16 | Deployment | milestone | 0d | 2025-11-13 | 2025-11-13 | 24 | 0d |  |  |  |  |  |

| ID | WBS | Task | Duration | Start | Finish | Predecessors | Total slack | Resources | Work | Cost |
| --- | --- | --- | --- | --- | --- | --- | --- | --- | --- | --- |
| 26 | 3 | **Closeout** | 18d | 2025-11-14 | 2025-12-09 | 9 | 0d |  | 952h | 87,240 |
| 27 | 3.1 | Project Performance Evaluation | 4d | 2025-11-14 | 2025-11-19 | 24 | 0d | Business Unit Managers; Executive - CEO Team (Murat); IT Director (Liz); Me; Project Coordinator; Project Manager; Senior Project Manager | 224h | 20,480 |
| 28 | 3.2 | Beta Launch | 7d | 2025-11-20 | 2025-11-28 | 27 | 0d | Business Unit Managers; Executive - CEO Team (Murat); IT Director (Liz); Me; Project Coordinator; Project Manager; Senior Project Manager | 392h | 35,840 |
| 29 | 3.3 | KPI Metric Evaluation | 5d | 2025-12-01 | 2025-12-05 | 28 | 0d | Executive - CEO Team (Murat); IT Director (Liz); Me; Project Coordinator; Project Manager; Senior Project Manager | 240h | 23,200 |
| 30 | 3.4 | Debrief - Final | 1d | 2025-12-08 | 2025-12-08 | 29 | 0d | Business Unit Managers; Development Team; Executive - CEO Team (Murat); IT Director (Liz); Me; Project Coordinator; Project Manager; Senior Project Manager | 64h | 5,720 |
| 31 | 3.5 | Lessons Learned - Closeout Report | 1d | 2025-12-09 | 2025-12-09 | 29, 30 | 0d | Me; Project Coordinator; Project Manager; Senior Project Manager | 32h | 2,000 |
